Schedule from OmniPlan, 2017-09-11 to 2018-06-13.
Project start 2017-09-04

## Resources

| Resource | Group |
| --- | --- |
| Resource 1 | staff |
| Equipment 1 | equipment |
| Material 1 | material |
| Group 1 | group |
| Erik Regla | staff |

## Schedule

| ID | WBS | Task | Type | Start | Predecessors | Constraint | Resources | Work |
| --- | --- | --- | --- | --- | --- | --- | --- | --- |
| 1 | 1 | **Memoria** |  |  |  |  |  |  |
| 2 | 1.1 | **Approximate Search Indices** |  |  |  |  |  |  |
| 3 | 1.1.1 | **Research** |  |  |  |  |  |  |
| 4 | 1.1.1.1 | Literature review on metric spaces |  | 2017-09-11 |  |  | Erik Regla | 32h |
| 5 | 1.1.1.2 | Literature review on approximate search methods |  | 2017-09-28 |  |  | Erik Regla | 32h |
| 6 | 1.1.1.3 | Complexity analysis for selected index operations |  | 2017-10-11 |  |  | Erik Regla | 32h |
| 7 | 1.1.1.4 | Detection of potential tasks worth of parallelization |  | 2017-11-29 | 11 |  | Erik Regla | 24h |
| 8 | 1.1.1.5 | Research: Stage 1 Finished | milestone | 2017-11-07 | 6, 7, 4, 5 |  | Erik Regla |  |
| 9 | 1.1.2 | **Development** |  |  |  |  |  |  |
| 10 | 1.1.2.1 | Metric space index, reference implementation |  | 2017-10-25 | 6 |  | Erik Regla | 40h |
| 11 | 1.1.2.2 | Experiment design and benchmarking |  | 2017-11-14 | 10 |  | Erik Regla | 40h |
| 12 | 1.1.2.3 | Index implementation and evaluation complete. | milestone | 2017-10-25 | 10, 11 |  | Erik Regla |  |
| 13 | 1.1.3 | **Documentation** |  |  |  |  |  |  |
| 14 | 1.1.3.1 | Metric spaces |  | 2017-12-07 | 4 |  | Erik Regla | 16h |
| 15 | 1.1.3.2 | Similarity search |  | 2017-12-13 | 6, 5 |  | Erik Regla | 16h |
| 16 | 1.1.3.3 | Index implementation |  | 2017-12-20 | 10 |  | Erik Regla | 16h |
| 17 | 1.1.3.4 | Benchmark results |  | 2017-12-27 | 11 |  | Erik Regla | 16h |
| 18 | 1.1.3.5 | Parallelization targets |  | 2018-01-03 | 7 |  | Erik Regla | 16h |
| 19 | 1.1.3.6 | Documentation for Stage 1 finished | milestone | 2017-11-09 | 15, 14, 16, 17, 18 |  | Erik Regla |  |
| 20 | 1.1.4 | Stage 1 ready | milestone | 2017-11-09 | 3, 9, 13 |  | Erik Regla |  |
| 21 | 1.2 | **FPGAs** |  |  | 2 |  |  |  |
| 22 | 1.2.1 | **Research** |  |  |  | start no earlier than 2017-09-11 |  |  |
| 23 | 1.2.1.1 | Literature review on FPGA development |  | 2018-01-09 |  | start no earlier than 2017-09-11 | Erik Regla | 24h |
| 24 | 1.2.1.2 | Literature review on interconnection techniques |  | 2018-01-17 |  | start no earlier than 2017-09-11 | Erik Regla | 24h |
| 25 | 1.2.1.3 | Literature review on past implementation of reconfigurable computing solutions |  | 2018-01-25 |  | start no earlier than 2017-09-11 | Erik Regla | 24h |
| 26 | 1.2.1.4 | Literature review on previous software developed for the Adapteva Parallella SoC |  | 2018-02-07 |  | start no earlier than 2017-09-11 | Erik Regla | 24h |
| 27 | 1.2.1.5 | Literature review on ASIC prototyping |  | 2018-02-15 |  | start no earlier than 2017-09-11 | Erik Regla | 16h |
| 28 | 1.2.1.6 | Analysis of shortcomings/bottlenecks derived from ASIC design |  | 2018-03-27 | 31, 32 | start no earlier than 2017-09-11 | Erik Regla | 24h |
| 29 | 1.2.1.7 | Benchmarking |  | 2018-04-24 | 33 | start no earlier than 2017-09-11 | Erik Regla | 24h |

| ID | WBS | Task | Type | Start | Predecessors | Constraint | Resources | Work |
| --- | --- | --- | --- | --- | --- | --- | --- | --- |
| 30 | 1.2.2 | **Development** |  |  |  | start no earlier than 2017-09-11 |  |  |
| 31 | 1.2.2.1 | Initial FPGA accelerator |  | 2018-02-21 | 23, 24, 25, 26 | start no earlier than 2017-09-11 | Erik Regla | 40h |
| 32 | 1.2.2.2 | Specialized IPs |  | 2018-03-08 | 23, 24, 25, 26, 27 | start no earlier than 2017-09-11 | Erik Regla | 40h |
| 33 | 1.2.2.3 | Improved index |  | 2018-04-05 |  | start no earlier than 2017-09-11 | Erik Regla | 40h |
| 34 | 1.2.3 | **Documentation** |  |  |  | start no earlier than 2017-09-11 |  |  |
| 35 | 1.2.3.1 | FPGA development |  | 2018-05-03 | 31 | start no earlier than 2017-09-11 | Erik Regla | 16h |
| 36 | 1.2.3.2 | Adapteva Parallella |  | 2018-05-10 | 31 | start no earlier than 2017-09-11 | Erik Regla | 16h |
| 37 | 1.2.3.3 | Interconnection |  | 2018-05-17 |  | start no earlier than 2017-09-11 | Erik Regla | 16h |
| 38 | 1.2.3.4 | IP generation and synthesis |  | 2018-05-23 | 32 | start no earlier than 2017-09-11 | Erik Regla | 16h |
| 39 | 1.2.3.5 | Accelerator implementation |  | 2018-05-30 | 33 | start no earlier than 2017-09-11 | Erik Regla | 16h |
| 40 | 1.2.3.6 | Index improvements |  | 2018-06-06 | 29 | start no earlier than 2017-09-11 | Erik Regla | 16h |
| 41 | 1.2.3.7 | Results |  | 2018-06-13 | 40, 29 | start no earlier than 2017-09-11 | Erik Regla | 16h |
| 42 | 1.2.4 | Stage 2 complete | milestone | 2017-12-20 | 30, 34 | start no earlier than 2017-09-11 | Erik Regla |  |
| 43 | 1.3 | Memoria complete | milestone | 2017-12-20 | 2, 21 |  | Erik Regla |  |
